# Barber Shop

Schedule from MS Project, 2022-09-20 to 2022-12-12, status date 2022-11-26, 24 hours a day, costs in €, A marks actual dates.

## Calendars

- Barber Shop: Mon 08:00-12:00, 13:00-17:00; Tue-Sun 11:00-12:00, 16:00-17:00. Exceptions (off unless hours are given): 2022-10-12 (Día de la Hispanidad), 2022-11-01 (Día de Todos los Santos), 2022-12-06 (Día de la Constitución), 2022-12-08 (Día de lnmaculada Concepción).

## Resources

| Resource | Group | Rate |
| --- | --- | --- |
| Equipos para el desarrollo del producto | Desarrollador |  |
| Miembros del equipo de desarrollo | Equipo de trabajo | 12 |
| Miembros del equipo director | Project Manager | 25 |
| Servicio de luz | Material |  |
| Servicio de fibra | Material |  |

## Schedule

| ID | WBS | Task | Duration | Start | Finish | Predecessors | Complete | Baseline 1 start | Baseline 1 finish | Constraint | Resources | Work | Actual work | Cost | Baseline cost | Actual cost | Código EDT |
| --- | --- | --- | --- | --- | --- | --- | --- | --- | --- | --- | --- | --- | --- | --- | --- | --- | --- |
| 1 | 1 | **Acta de constitución** | 0.25d | 2022-09-20 11:00 A | 2022-09-22 17:00 A |  | 100% | 2022-09-20 11:00 | 2022-09-22 17:00 |  |  | 6h | 6h | 150 | 100 | 150 |  |
| 2 | 1.1 | Desarrollar acta de constitucion | 6h | 2022-09-20 11:00 A | 2022-09-22 17:00 A |  | 100% |  |  |  |  | 6h | 6h | 150 | 100 | 150 |  |
| 3 | 2 | **Registro de supuestos** | 0.05d | 2022-09-25 11:00 A | 2022-09-25 16:12 A |  | 100% |  |  |  |  | 1h | 1h | 25 | 25 | 25 | 1.2 |
| 4 | 2.1 | Desarrollo del registro | 0.02d | 2022-09-25 11:00 A | 2022-09-25 16:12 A |  | 100% |  |  | start no earlier than 2022-09-25 08:00 | Servicio de fibra [200%]; Servicio de luz [200%]; Miembros del equipo director; Equipos para el desarrollo del producto | 1h | 1h | 25 | 25 | 25 |  |
| 5 | 3 | **Registros de interesados** | 0.02d | 2022-09-25 11:00 A | 2022-09-25 11:30 A |  | 100% |  |  |  |  | 1h | 1h | 25 | 6.25 | 25 | 1.3 |
| 6 | 3.1 | Desarrollo del registro | 0.5h | 2022-09-25 11:00 A | 2022-09-25 11:30 A |  | 100% |  |  | start no earlier than 2022-09-25 08:00 | Servicio de fibra [200%]; Servicio de luz [200%]; Miembros del equipo director; Equipos para el desarrollo del producto | 1h | 1h | 25 | 6.25 | 25 |  |
| 7 | 4 | **Gestión de la integración** | 0.08d | 2022-09-29 11:00 A | 2022-09-29 17:00 A |  | 100% |  |  |  |  | 2h | 2h | 50 | 25 | 50 | 2.1 |
| 8 | 4.1 | Desarrollar Plan de Dirección | 1h | 2022-09-29 11:00 A | 2022-09-29 17:00 A |  | 100% |  |  | finish no earlier than 2022-09-29 17:00 | Servicio de fibra; Servicio de luz; Miembros del equipo director; Equipos para el desarrollo del producto | 2h | 2h | 50 | 25 | 50 |  |
| 9 | 5 | **Gestión de alcance** | 1.62d | 2022-09-29 11:00 A | 2022-10-13 12:00 A |  | 100% |  |  |  |  | 12h | 12h | 300 | 250 | 300 | 2.2.1 |
| 10 | 5.1 | Plan de gestión del alcance | 1h | 2022-09-29 11:00 A | 2022-10-02 17:00 A | 8SS | 100% |  |  | finish no earlier than 2022-10-02 17:00 | Servicio de fibra; Servicio de luz; Miembros del equipo director; Equipos para el desarrollo del producto | 2h | 2h | 50 | 50 | 50 |  |
| 11 | 5.2 | Desarrollo del enunciado del alcance | 0.5h | 2022-09-29 11:00 A | 2022-09-29 12:00 A | 8SS | 100% |  |  | start no earlier than 2022-09-29 08:00 | Servicio de fibra; Servicio de luz; Miembros del equipo director; Equipos para el desarrollo del producto | 1h | 1h | 25 | 25 | 25 |  |
| 12 | 5.3 | Desarrollo de la EDT | 2h | 2022-10-02 11:00 A | 2022-10-12 17:00 A | 10SS | 100% |  |  | finish no earlier than 2022-10-12 17:00 | Servicio de fibra [1200%]; Servicio de luz [1200%]; Miembros del equipo director; Equipos para el desarrollo del producto | 4h | 4h | 100 | 50 | 100 |  |
| 13 | 5.4 | Diccionario de la EDT | 0.5h | 2022-10-02 11:00 A | 2022-10-02 12:00 A | 12SS | 100% |  |  | finish no earlier than 2022-10-12 17:00 | Servicio de fibra; Servicio de luz; Miembros del equipo director; Equipos para el desarrollo del producto | 1h | 1h | 25 | 25 | 25 |  |
| 14 | 5.5 | Plan de Gestión de Requisitos | 1h | 2022-10-13 11:00 A | 2022-10-13 12:00 A | 8SS | 100% |  |  | start no earlier than 2022-10-13 08:00 | Servicio de fibra [200%]; Servicio de luz [200%]; Miembros del equipo director; Equipos para el desarrollo del producto | 2h | 2h | 50 | 50 | 50 |  |
| 15 | 5.6 | Matriz de Trazabilidad | 0.5h | 2022-10-13 11:00 A | 2022-10-13 12:00 A | 16SS | 100% |  |  | finish no earlier than 2022-10-13 17:00 | Servicio de fibra; Servicio de luz; Miembros del equipo director; Equipos para el desarrollo del producto | 1h | 1h | 25 | 25 | 25 |  |
| 16 | 5.7 | Desarrollo de los requisitos | 0.5h | 2022-10-13 11:00 A | 2022-10-13 12:00 A | 14SS | 100% |  |  | finish no earlier than 2022-10-13 17:00 | Servicio de fibra; Servicio de luz; Miembros del equipo director; Equipos para el desarrollo del producto | 1h | 1h | 25 | 25 | 25 |  |
| 17 | 6 | **Gestión de Cambio** | 0.08d | 2022-09-29 11:00 A | 2022-09-29 17:00 A |  | 100% |  |  |  |  | 2.5h | 2.5h | 62.5 | 37.5 | 62.5 | 2.2.2 |
| 18 | 6.1 | Plan de Gestión de Cambio | 1h | 2022-09-29 11:00 A | 2022-09-29 17:00 A | 8SS | 100% |  |  | finish no earlier than 2022-09-29 17:00 | Servicio de fibra; Servicio de luz; Miembros del equipo director; Equipos para el desarrollo del producto | 2h | 2h | 50 | 25 | 50 |  |
| 19 | 6.2 | Plantilla formulario de cambios | 15min | 2022-09-29 11:00 A | 2022-09-29 17:00 A |  | 100% |  |  | finish no earlier than 2022-09-29 17:00 | Servicio de fibra; Servicio de luz; Miembros del equipo director; Equipos para el desarrollo del producto | 0.5h | 0.5h | 12.5 | 12.5 | 12.5 |  |
| 20 | 7 | **Gestión del Cronograma** | 0.12d | 2022-10-04 11:00 A | 2022-10-05 12:00 A |  | 100% |  |  |  |  | 7h | 7h | 175 | 125 | 175 | 2.2.3 |
| 21 | 7.1 | Plan de Gestión del Cronograma | 0.5h | 2022-10-05 11:00 A | 2022-10-05 12:00 A | 10SS | 100% |  |  | finish no earlier than 2022-10-06 17:00 | Servicio de fibra; Servicio de luz; Miembros del equipo director; Equipos para el desarrollo del producto | 1h | 1h | 25 | 25 | 25 |  |
| 22 | 7.2 | Lista de Actividades | 15min | 2022-10-05 11:00 A | 2022-10-05 12:00 A | 10SS | 100% |  |  | finish no earlier than 2022-10-06 17:00 | Servicio de fibra; Servicio de luz; Miembros del equipo director; Equipos para el desarrollo del producto | 0.5h | 0.5h | 12.5 | 12.5 | 12.5 |  |
| 23 | 7.3 | Lista de hitos | 15min | 2022-10-05 11:00 A | 2022-10-05 12:00 A | 10SS | 100% |  |  | finish no earlier than 2022-10-06 17:00 | Servicio de fibra; Servicio de luz; Miembros del equipo director; Equipos para el desarrollo del producto | 0.5h | 0.5h | 12.5 | 12.5 | 12.5 |  |
| 24 | 7.4 | Secuenciación de actividades | 30min | 2022-10-05 11:00 A | 2022-10-05 12:00 A | 10SS | 100% |  |  | finish no earlier than 2022-10-06 17:00 | Servicio de fibra; Servicio de luz; Miembros del equipo director; Equipos para el desarrollo del producto | 1h | 1h | 25 | 12.5 | 25 |  |
| 25 | 7.5 | Cronograma | 1.5h | 2022-10-04 11:00 A | 2022-10-04 16:45 A | 10SS | 100% |  |  | finish no earlier than 2022-10-06 17:00 | Servicio de fibra; Servicio de luz; Miembros del equipo director; Equipos para el desarrollo del producto | 3h | 3h | 75 | 37.5 | 75 |  |
| 26 | 7.6 | Estimaciones de tiempo | 0.5h | 2022-10-05 11:00 A | 2022-10-05 12:00 A | 10SS | 100% |  |  | finish no earlier than 2022-10-06 17:00 | Servicio de fibra; Servicio de luz; Miembros del equipo director; Equipos para el desarrollo del producto | 1h | 1h | 25 | 25 | 25 |  |

| ID | WBS | Task | Duration | Start | Finish | Predecessors | Complete | Constraint | Resources | Work | Actual work | Cost | Baseline cost | Actual cost | Código EDT |
| --- | --- | --- | --- | --- | --- | --- | --- | --- | --- | --- | --- | --- | --- | --- | --- |
| 27 | 8 | **Gestión de Costes** | 0.08d | 2022-10-04 11:00 A | 2022-10-04 17:00 A |  | 100% |  |  | 8h | 8h | 200 | 137.5 | 200 | 2.2.4 |
| 28 | 8.1 | Plan de Gestión de Costes | 1h | 2022-10-04 11:00 A | 2022-10-04 17:00 A | 8SS | 100% | finish no earlier than 2022-10-04 17:00 | Servicio de fibra; Servicio de luz; Miembros del equipo director; Equipos para el desarrollo del producto | 2h | 2h | 50 | 37.5 | 50 |  |
| 29 | 8.2 | Estimaciones de costes | 1h | 2022-10-04 11:00 A | 2022-10-04 17:00 A | 8SS | 100% | start no earlier than 2022-10-04 08:00 | Servicio de fibra; Servicio de luz; Miembros del equipo director; Equipos para el desarrollo del producto | 2h | 2h | 50 | 50 | 50 |  |
| 30 | 8.3 | Presupuesto | 1h | 2022-10-04 11:00 A | 2022-10-04 17:00 A | 8SS | 100% | finish no earlier than 2022-10-04 17:00 | Servicio de fibra; Servicio de luz; Miembros del equipo director; Equipos para el desarrollo del producto | 2h | 2h | 50 | 25 | 50 |  |
| 31 | 8.4 | Linea Bases de Costes | 1h | 2022-10-04 11:00 A | 2022-10-04 17:00 A | 8SS | 100% | finish no earlier than 2022-10-04 17:00 | Servicio de fibra; Servicio de luz; Miembros del equipo director; Equipos para el desarrollo del producto | 2h | 2h | 50 | 25 | 50 |  |
| 32 | 9 | **Gestión de Configuración** | 0.04d | 2022-10-04 11:00 A | 2022-10-04 12:00 A |  | 100% |  |  | 1.5h | 1.5h | 37.5 | 37.5 | 37.5 | 2.2.5 |
| 33 | 9.1 | Plan de Gestión de Configuración | 0.75h | 2022-10-04 11:00 A | 2022-10-04 12:00 A | 8SS | 100% | finish no earlier than 2022-10-04 17:00 | Servicio de fibra; Servicio de luz; Miembros del equipo director; Equipos para el desarrollo del producto | 1.5h | 1.5h | 37.5 | 37.5 | 37.5 |  |
| 34 | 10 | **Gestión de Riesgos** | 0.08d | 2022-10-04 11:00 A | 2022-10-04 17:00 A |  | 100% |  |  | 4h | 4h | 100 | 87.5 | 100 | 2.2.6 |
| 35 | 10.1 | Plan de Gestión de Riesgos | 1h | 2022-10-04 11:00 A | 2022-10-04 17:00 A | 8SS | 100% | finish no earlier than 2022-10-04 17:00 | Servicio de fibra; Servicio de luz; Miembros del equipo director; Equipos para el desarrollo del producto | 2h | 2h | 50 | 37.5 | 50 |  |
| 36 | 10.2 | Registro de Riesgos | 1h | 2022-10-04 11:00 A | 2022-10-04 17:00 A | 8SS | 100% | start no earlier than 2022-10-04 08:00 | Servicio de fibra; Servicio de luz; Miembros del equipo director; Equipos para el desarrollo del producto | 2h | 2h | 50 | 50 | 50 |  |
| 37 | 11 | **Gestión de Recursos** | 0.12d | 2022-10-04 11:00 A | 2022-10-05 12:00 A |  | 100% |  |  | 3h | 3h | 75 | 100 | 75 | 2.2.7 |
| 38 | 11.1 | Plan de Gestión de Recursos | 0.75h | 2022-10-04 11:00 A | 2022-10-04 12:00 A | 8SS | 100% | finish no earlier than 2022-10-04 17:00 | Servicio de fibra; Servicio de luz; Miembros del equipo director; Equipos para el desarrollo del producto | 1.5h | 1.5h | 37.5 | 37.5 | 37.5 |  |
| 39 | 11.2 | Matriz RACI | 0.5h | 2022-10-05 11:00 A | 2022-10-05 12:00 A | 8SS | 100% | start no earlier than 2022-10-05 08:00 | Servicio de fibra; Servicio de luz; Miembros del equipo director; Equipos para el desarrollo del producto | 1h | 1h | 25 | 50 | 25 |  |
| 40 | 11.3 | Estructura de Recursos | 0.25h | 2022-10-05 11:00 A | 2022-10-05 12:00 A |  | 100% | finish no earlier than 2022-10-05 17:00 | Servicio de fibra; Servicio de luz; Miembros del equipo director; Equipos para el desarrollo del producto | 0.5h | 0.5h | 12.5 | 12.5 | 12.5 |  |
| 41 | 12 | **Gestión de la Calidad** | 0.08d | 2022-10-15 11:00 A | 2022-10-15 17:00 A |  | 100% |  |  | 2h | 2h | 50 | 37.5 | 50 | 2.2.8 |
| 42 | 12.1 | Plan de Gestión de Calidad | 1h | 2022-10-15 11:00 A | 2022-10-15 17:00 A | 8SS | 100% | finish no earlier than 2022-10-15 17:00 | Servicio de fibra; Servicio de luz; Miembros del equipo director; Equipos para el desarrollo del producto | 2h | 2h | 50 | 37.5 | 50 |  |
| 43 | 13 | **Gestión de Comunicaciones** | 0.08d | 2022-10-15 11:00 A | 2022-10-15 17:00 A |  | 100% |  |  | 2h | 2h | 37.5 | 37.5 | 37.5 | 2.2.9 |
| 44 | 13.1 | Plan de Gestión de Comunicaciones | 1h | 2022-10-15 11:00 A | 2022-10-15 17:00 A | 8SS | 100% | finish no earlier than 2022-10-15 17:00 | Servicio de fibra; Servicio de luz; Miembros del equipo director; Equipos para el desarrollo del producto | 2h | 2h | 37.5 | 37.5 | 37.5 |  |
| 45 | 14 | **Gestión de Adquisiciones** | 0.04d | 2022-10-15 11:00 A | 2022-10-15 12:00 A |  | 100% |  |  | 1.5h | 1.5h | 37.5 | 37.5 | 37.5 | 2.2.10 |
| 46 | 14.1 | Plan de Gestión de Adquisciones | 0.75h | 2022-10-15 11:00 A | 2022-10-15 12:00 A | 8SS | 100% | finish no earlier than 2022-10-15 17:00 | Servicio de fibra; Servicio de luz; Miembros del equipo director; Equipos para el desarrollo del producto | 1.5h | 1.5h | 37.5 | 37.5 | 37.5 |  |
| 47 | 15 | **Iteración 1** | 2d | 2022-11-07 08:00 A | 2022-11-21 17:00 A |  | 100% |  |  | 101h | 101h | 1,218 | 1,500 | 1,218 | 3.1 |
| 48 | 15.1 | Desarrollo iteración 1 | 15.5h | 2022-11-14 08:00 A | 2022-11-21 17:00 A |  | 100% | finish no earlier than 2022-11-21 17:00 | Equipos para el desarrollo del producto; Miembros del equipo de desarrollo; Servicio de fibra [200%]; Servicio de luz [200%] | 25h | 25h | 300 | 420 | 300 |  |
| 49 | 15.2 | Formación del equipo | 26.67h | 2022-11-07 08:00 A | 2022-11-14 15:40 A | 4SS, 6SS, 8SS, 10SS, 11SS, 12SS, 13SS, 14SS, 15SS, 16SS, 18SS, 19SS, 21SS, 22SS, 23SS, 24SS, 25SS, 26SS, 28SS, 29SS, 30SS, 31SS, 33SS, 35SS, 36SS, 38SS, 39SS, 40SS, 42SS, 44SS, 46SS | 100% | finish no earlier than 2022-11-07 17:00 | Equipos para el desarrollo del producto [37.5%]; Miembros del equipo de desarrollo [37.5%]; Servicio de fibra [1000%]; Servicio de luz [1000%] | 20h | 20h | 240 | 240 | 240 |  |
| 50 | 15.3 | Configurción del entorno | 40h | 2022-11-07 08:00 A | 2022-11-20 17:00 A | 4SS, 6SS, 8SS, 10SS, 11SS, 12SS, 13SS, 14SS, 15SS, 16SS, 18SS, 19SS, 21SS, 22SS, 23SS, 24SS, 25SS, 26SS, 28SS, 29SS, 30SS, 31SS, 33SS, 35SS, 36SS, 38SS, 39SS, 40SS, 42SS, 44SS, 46SS | 100% | finish no earlier than 2022-11-07 17:00 | Equipos para el desarrollo del producto [12.5%]; Miembros del equipo de desarrollo [12.5%]; Servicio de fibra [1000%]; Servicio de luz [1000%] | 10h | 10h | 120 | 120 | 120 |  |
| 51 | 15.4 | Gestión de Citas | 4.12h | 2022-11-17 11:00 A | 2022-11-21 09:09 A | 4SS, 6SS, 8SS, 10SS, 11SS, 12SS, 13SS, 14SS, 15SS, 16SS, 18SS, 19SS, 21SS, 22SS, 23SS, 24SS, 25SS, 26SS, 28SS, 29SS, 30SS, 31SS, 33SS, 35SS, 36SS, 38SS, 39SS, 40SS, 42SS, 44SS, 46SS | 100% | finish no earlier than 2022-11-19 17:00 | Equipos para el desarrollo del producto [237.5%]; Miembros del equipo de desarrollo [237.5%]; Servicio de fibra [951.2%]; Servicio de luz [951.2%] | 19h | 19h | 234 | 240 | 234 |  |
| 52 | 15.5 | Catalogo de Servicios | 6h | 2022-11-15 11:00 A | 2022-11-17 17:00 A | 4SS, 6SS, 8SS, 10SS, 11SS, 12SS, 13SS, 14SS, 15SS, 16SS, 18SS, 19SS, 21SS, 22SS, 23SS, 24SS, 25SS, 26SS, 28SS, 29SS, 30SS, 31SS, 33SS, 35SS, 36SS, 38SS, 39SS, 40SS, 42SS, 44SS, 46SS | 100% | start no earlier than 2022-11-15 11:00 | Equipos para el desarrollo del producto [125%]; Miembros del equipo de desarrollo [125%]; Servicio de fibra [375%]; Servicio de luz [375%] | 15h | 15h | 180 | 240 | 180 |  |
| 53 | 15.6 | Sistema de Búsqueda | 7.06h | 2022-11-18 11:00 A | 2022-11-21 09:03 A | 4SS, 6SS, 8SS, 10SS, 11SS, 12SS, 13SS, 14SS, 15SS, 16SS, 18SS, 19SS, 21SS, 22SS, 23SS, 24SS, 25SS, 26SS, 28SS, 29SS, 30SS, 31SS, 33SS, 35SS, 36SS, 38SS, 39SS, 40SS, 42SS, 44SS, 46SS | 100% | start no earlier than 2022-11-18 11:00 | Equipos para el desarrollo del producto [85%]; Miembros del equipo de desarrollo [85%]; Servicio de fibra [400.3%]; Servicio de luz [400.3%] | 12h | 12h | 144 | 240 | 144 |  |

| ID | WBS | Task | Type | Duration | Start | Finish | Predecessors | Complete | Remaining | Actual start | Total slack | Free slack | Constraint | Resources | Work | Actual work | Cost | Baseline cost | Actual cost | Código EDT |
| --- | --- | --- | --- | --- | --- | --- | --- | --- | --- | --- | --- | --- | --- | --- | --- | --- | --- | --- | --- | --- |
| 54 | 16 | **Iteración 2** |  | 0.83d | 2022-11-21 08:00 A | 2022-11-27 17:00 |  | 94% | 0.05d |  |  |  |  |  | 104h | 98.2h | 1,248 | 1,500 | 1,178.4 | 3.2 |
| 55 | 16.1 | Desarrollo de la iteración 2 |  | 15h | 2022-11-21 08:00 A | 2022-11-25 12:00 A | 49SS, 50SS, 51SS, 52SS, 53SS | 100% |  |  |  |  | start no earlier than 2022-11-21 08:00 | Equipos para el desarrollo del producto; Miembros del equipo de desarrollo; Servicio de fibra; Servicio de luz | 30h | 30h | 360 | 780 | 360 |  |
| 56 | 16.2 | Sistemas de pagos |  | 11.5h | 2022-11-21 08:00 A | 2022-11-23 16:30 A | 49SS, 50SS, 51SS, 52SS, 53SS | 100% |  |  |  |  | start no earlier than 2022-11-21 08:00 | Equipos para el desarrollo del producto; Miembros del equipo de desarrollo; Servicio de fibra [328.6%]; Servicio de luz [328.6%] | 23h | 23h | 276 | 240 | 276 |  |
| 57 | 16.3 | Sistema devolución |  | 14.5h | 2022-11-21 08:00 A | 2022-11-27 17:00 | 49SS, 50SS, 51SS, 52SS, 53SS | 80% | 2.9h |  | 1.83d | 1.17d | finish no earlier than 2022-11-27 17:00 | Equipos para el desarrollo del producto; Miembros del equipo de desarrollo; Servicio de fibra [200%]; Servicio de luz [200%] | 29h | 23.2h | 348 | 240 | 278.4 |  |
| 58 | 16.4 | Sistema de Compra |  | 11h | 2022-11-21 08:00 A | 2022-11-23 12:00 A | 49SS, 50SS, 51SS, 52SS, 53SS | 100% |  |  |  |  | start no earlier than 2022-11-21 08:00 | Equipos para el desarrollo del producto; Miembros del equipo de desarrollo; Servicio de fibra; Servicio de luz | 22h | 22h | 264 | 240 | 264 |  |
| 59 | 17 | **Iteración 3** |  | 28h | 2022-11-28 08:00 | 2022-12-05 17:00 | 54 |  | 28h | 2022-11-21 08:00 |  |  |  |  |  |  |  | 600 |  | 3.3 |
| 60 | 17.1 | Desarrollo de la iteración 3 | milestone | 0h | 2022-11-26 17:00 A | 2022-11-26 17:00 A | 55SS, 56SS, 57SS, 58SS | 100% |  |  |  |  | finish no earlier than 2022-11-26 17:00 | Equipos para el desarrollo del producto; Miembros del equipo de desarrollo; Servicio de fibra; Servicio de luz |  |  |  |  |  |  |
| 61 | 17.2 | Despliegue | milestone | 0h | 2022-11-21 08:00 A | 2022-11-21 08:00 A |  | 100% |  |  |  |  | start no earlier than 2022-11-21 08:00 |  |  |  |  |  |  |  |
| 62 | 17.3 | Manual de Usuario | milestone | 0h | 2022-11-28 17:00 | 2022-11-28 17:00 | 55SS, 56SS, 57SS, 58SS |  |  |  | 1.5d | 1.17d | finish no earlier than 2022-11-28 17:00 | Equipos para el desarrollo del producto; Miembros del equipo de desarrollo; Servicio de fibra; Servicio de luz |  |  |  |  |  |  |
| 63 | 18 | **Lecciones Aprendidas** |  | 0.88d | 2022-12-06 08:00 | 2022-12-12 17:00 |  |  |  |  |  |  |  |  |  |  |  | 87.5 |  | 5.1 |
| 64 | 18.1 | Lecciones Aprendidas | milestone | 0h | 2022-12-12 17:00 | 2022-12-12 17:00 | 60SS, 62SS |  |  |  | 0d |  | finish no earlier than 2022-12-12 17:00 | Equipos para el desarrollo del producto; Miembros del equipo de desarrollo; Servicio de fibra; Servicio de luz |  |  |  |  |  |  |
| 65 | 18.2 | Cierre del Proyecto | milestone | 0h | 2022-12-12 08:00 | 2022-12-12 08:00 | 60SS, 62SS |  |  |  | 0.33d |  | start no earlier than 2022-12-12 08:00 | Equipos para el desarrollo del producto; Miembros del equipo de desarrollo; Servicio de fibra; Servicio de luz |  |  |  |  |  |  |
